Schedule from MS Project XML, 2013-03-04 to 2013-04-01.

## Calendars

- Standard[Imported]: Mon-Fri 08:00-12:00, 13:00-17:00; Sat-Sun off.

## Resources

| Resource | Group |
| --- | --- |
| Non affecté |  |
| Andrei | Validation |
| Anton | Validation |
| Konstantin | Validation |
| Valid-FLO |  |
| TestBench |  |

## Schedule

| ID | WBS | Task | Type | Duration | Start | Finish | Predecessors | Total slack | Constraint | Resources |
| --- | --- | --- | --- | --- | --- | --- | --- | --- | --- | --- |
| 1 | 2 | **Control and monitor battery charges** |  | 2d | 2013-03-04 | 2013-03-05 |  | 1900d |  |  |
| 2 | 2.1 | Code availability | milestone | 0d | 2013-03-04 | 2013-03-04 |  | 2000d |  |  |
| 3 | 2.2 | VTD specification |  | 1d | 2013-03-04 | 2013-03-04 |  | 1900d |  |  |
| 4 | 2.3 | Testbench execution and report |  | 1d | 2013-03-05 | 2013-03-05 | 2, 3 | 1900d |  | TestBench |
| 5 | 3 | **Control of microclimate system** |  | 9d | 2013-03-04 | 2013-03-14 |  | 1200d |  |  |
| 6 | 3.1 | Code availability | milestone | 0d | 2013-03-13 | 2013-03-13 |  | 1200d | start no earlier than 2013-03-13 |  |
| 7 | 3.2 | VTD specification |  | 2d | 2013-03-04 | 2013-03-05 |  | 1700d |  | Andrei; Anton |
| 8 | 3.3 | Testbench execution and report |  | 2d | 2013-03-13 | 2013-03-14 | 7, 6 | 1200d |  | TestBench |
| 9 | 4 | **Sanding System Management** |  | 9.75d | 2013-03-04 | 2013-03-15 |  | 1125d |  |  |
| 10 | 4.1 | Code availability | milestone | 0d | 2013-03-04 | 2013-03-04 |  | 1900d |  |  |
| 11 | 4.2 | VTD specification |  | 3d | 2013-03-04 | 2013-03-06 |  | 1600d |  | Anton |
| 12 | 4.3 | Testbench execution and report |  | 2d | 2013-03-13 | 2013-03-15 | 11, 10 | 1125d | start no earlier than 2013-03-13 | TestBench |
| 13 | 5 | Delivery Environment MU | milestone | 0d | 2013-03-04 | 2013-03-04 |  | 2100d |  |  |
| 14 | 6 | **Bring Train Into service : part 2** |  | 8d | 2013-03-04 | 2013-03-13 |  | 1300d |  |  |
| 15 | 6.1 | VTD specification |  | 5d | 2013-03-04 | 2013-03-08 |  | 1300d |  |  |
| 16 | 6.2 | Code availability | milestone | 0d | 2013-03-04 | 2013-03-04 |  | 1800d |  |  |
| 17 | 6.3 | Testbench execution and report |  | 3d | 2013-03-11 | 2013-03-13 | 16, 15 | 1300d |  | TestBench |
| 18 | 7 | **Management of auxiliary loads contactors** |  | 8d | 2013-03-04 | 2013-03-13 |  | 1300d |  |  |
| 19 | 7.1 | Code availability | milestone | 0d | 2013-03-04 | 2013-03-04 |  | 1800d |  |  |
| 20 | 7.2 | VTD specification |  | 5d | 2013-03-04 | 2013-03-08 |  | 1300d |  |  |
| 21 | 7.3 | Testbench execution and report |  | 3d | 2013-03-11 | 2013-03-13 | 20, 19 | 1300d |  | TestBench |
| 22 | 8 | **Parking Mode In Active State** |  | 2d | 2013-03-04 | 2013-03-05 |  | 1900d |  |  |
| 23 | 8.1 | Code availability | milestone | 0d | 2013-03-04 | 2013-03-04 |  | 2000d |  |  |
| 24 | 8.2 | VTD specification |  | 1d | 2013-03-04 | 2013-03-04 |  | 1900d |  | Andrei |
| 25 | 8.3 | Testbench execution and report |  | 1d | 2013-03-05 | 2013-03-05 | 24, 23 | 1900d |  | TestBench |

Notes:
- 3: FDD A1 and SwRSVR A5
- 7: FDD A3
- 11: NO FDD available???
- 15: NO AVAILABLE FDD!!!!
- 20: Very important function to be validated ASAP

| ID | WBS | Task | Type | Duration | Start | Finish | Predecessors | Total slack | Constraint | Resources |
| --- | --- | --- | --- | --- | --- | --- | --- | --- | --- | --- |
| 26 | 9 | **Manage km-meter and operating times** |  | 2d | 2013-03-04 | 2013-03-05 |  | 1900d |  |  |
| 27 | 9.1 | Code availability | milestone | 0d | 2013-03-04 | 2013-03-04 |  | 2000d |  |  |
| 28 | 9.2 | VTD specification |  | 1d | 2013-03-04 | 2013-03-04 |  | 1900d |  | Konstantin |
| 29 | 9.3 | Testbench execution and report |  | 1d | 2013-03-05 | 2013-03-05 | 28, 27 | 1900d |  | TestBench |
| 30 | 10 | **Brake Substitution Control** |  | 6d | 2013-03-04 | 2013-03-11 |  | 1500d |  |  |
| 31 | 10.1 | Code availability | milestone | 0d | 2013-03-04 | 2013-03-04 |  | 1900d |  |  |
| 32 | 10.2 | VTD specification |  | 4d | 2013-03-04 | 2013-03-07 |  | 1500d |  |  |
| 33 | 10.3 | Testbench execution and report |  | 2d | 2013-03-08 | 2013-03-11 | 32, 31 | 1500d |  | TestBench |
| 34 | 11 | **Antislide Protection System (WSP)** |  | 2d | 2013-03-04 | 2013-03-05 |  | 1900d |  |  |
| 35 | 11.1 | Code availability | milestone | 0d | 2013-03-04 | 2013-03-04 |  | 2000d |  |  |
| 36 | 11.2 | VTD specification |  | 1d | 2013-03-04 | 2013-03-04 |  | 1900d |  |  |
| 37 | 11.3 | Testbench execution and report |  | 1d | 2013-03-05 | 2013-03-05 | 36, 35 | 1900d |  | TestBench |
| 38 | 13 | **Machine Room Ventilation System** |  | 2d | 2013-03-04 | 2013-03-05 |  | 1900d |  |  |
| 39 | 13.1 | Code availability | milestone | 0d | 2013-03-04 | 2013-03-04 |  | 2000d |  |  |
| 40 | 13.2 | VTD specification |  | 1d | 2013-03-04 | 2013-03-04 |  | 1900d |  | Anton |
| 41 | 13.3 | Testbench execution and report |  | 1d | 2013-03-05 | 2013-03-05 | 40, 39 | 1900d |  | TestBench |
| 42 | 14 | **Detect and report a fire and fire extinction** |  | 3d | 2013-03-04 | 2013-03-06 |  | 1800d |  |  |
| 43 | 14.1 | Code availability | milestone | 0d | 2013-03-04 | 2013-03-04 |  | 1900d |  |  |
| 44 | 14.2 | VTD specification |  | 1d | 2013-03-04 | 2013-03-04 |  | 1800d |  |  |
| 45 | 14.3 | Testbench execution and report |  | 2d | 2013-03-05 | 2013-03-06 | 44, 43 | 1800d |  | TestBench |
| 46 | 16 | Delivery STR3 | milestone | 0d | 2013-03-30 | 2013-04-01 | 45, 25, 37, 29, 41, 21, 33, 8, 12, 4, 17, 59, 62 |  | start no earlier than 2013-03-30 |  |
| 47 | 17 | **Cruise Control (Speed regulation)** |  | 2d | 2013-03-04 | 2013-03-05 |  | 1900d |  |  |
| 48 | 17.1 | Code availability | milestone | 0d | 2013-03-04 | 2013-03-04 |  | 2000d |  |  |
| 49 | 17.2 | SPEC : Cruise Control (Speed regulation) |  | 1d | 2013-03-04 | 2013-03-04 |  | 1900d |  |  |
| 50 | 17.3 | Testbench execution and report |  | 1d | 2013-03-05 | 2013-03-05 | 49, 48 | 1900d |  | TestBench |

| ID | WBS | Task | Type | Duration | Start | Finish | Predecessors | Total slack | Resources |
| --- | --- | --- | --- | --- | --- | --- | --- | --- | --- |
| 51 | 18 | **Bring Train into Service. Part 1 - Depot supply** |  | 2d | 2013-03-04 | 2013-03-05 |  | 1900d |  |
| 52 | 18.1 | Code availability | milestone | 0d | 2013-03-04 | 2013-03-04 |  | 2000d |  |
| 53 | 18.2 | SPEC : Bring Train into Service. Part 1 - Depot supply |  | 1d | 2013-03-04 | 2013-03-04 |  | 1900d |  |
| 54 | 18.3 | Testbench execution and report |  | 1d | 2013-03-05 | 2013-03-05 | 53, 52 | 1900d | TestBench |
| 55 | 19 | Delivery STR4 | milestone | 0d | 2013-03-05 | 2013-03-05 | 51 | 1900d |  |
| 56 | 17 | **Axle Box bearings** |  | 5d | 2013-03-04 | 2013-03-08 |  | 1600d |  |
| 57 | 17.1 | VTD Devel |  | 3d | 2013-03-04 | 2013-03-06 |  | 1600d |  |
| 58 | 17.2 | Code availability |  | 0d | 2013-03-04 | 2013-03-04 |  | 1900d |  |
| 59 | 17.3 | RUN |  | 2d | 2013-03-07 | 2013-03-08 | 58, 57 | 1600d |  |
| 60 | 18 | **Administrate CAN Network** |  | 3d | 2013-03-04 | 2013-03-06 |  | 1800d |  |
| 61 | 18.1 | VTD |  | 2d | 2013-03-04 | 2013-03-05 |  | 1800d |  |
| 62 | 18.2 | Run |  | 1d | 2013-03-06 | 2013-03-06 | 63, 61 | 1800d |  |
| 63 | 18.3 | Code |  | 0d | 2013-03-04 | 2013-03-04 |  | 2000d |  |
| 64 | 19 | **Develop Driving Orders** |  | 7d | 2013-03-04 | 2013-03-12 |  | 1400d |  |
| 65 | 19.1 | Code |  | 0d | 2013-03-04 | 2013-03-04 |  | 1800d |  |
| 66 | 19.2 | VTD |  | 4d | 2013-03-04 | 2013-03-07 |  | 1400d |  |
| 67 | 19.3 | Run |  | 3d | 2013-03-08 | 2013-03-12 | 65, 66 | 1400d |  |
| 68 | 20 | **Provision and management of 110V** |  | 6d | 2013-03-04 | 2013-03-11 |  | 1500d |  |
| 69 | 20.1 | Code |  | 0d | 2013-03-04 | 2013-03-04 |  | 1800d |  |
| 70 | 20.2 | VTD |  | 3d | 2013-03-04 | 2013-03-06 |  | 1500d |  |
| 71 | 20.3 | Run |  | 3d | 2013-03-07 | 2013-03-11 | 69, 70 | 1500d |  |
| 72 | 21 | **Measure and indicate the train speed** |  | 3d | 2013-03-04 | 2013-03-06 |  | 1800d |  |
| 73 | 21.1 | Code |  | 0d | 2013-03-04 | 2013-03-04 |  | 2000d |  |
| 74 | 21.2 | VTD |  | 2d | 2013-03-04 | 2013-03-05 |  | 1800d |  |
| 75 | 21.3 | Run |  | 1d | 2013-03-06 | 2013-03-06 | 73, 74 | 1800d |  |
